# Dev Timeline

Schedule from MS Project, 2002-03-14 to 2002-05-13, A marks actual dates.
Symantec Corp.

## Calendars

- Standard: Mon-Fri 08:00-12:00, 13:00-17:00; Sat-Sun off.

## Resources

| Resource | Rate |
| --- | --- |
| Garret Polk | 2400000 |
| Collin Davis |  |
| Wesley Jordan |  |
| Kevin Mong |  |
| Wes |  |
| Wes Jordan |  |

## Schedule

| ID | WBS | Task | Duration | Start | Finish | Predecessors | Complete | Remaining | Baseline start | Baseline finish | Baseline duration | Total slack | Free slack | Constraint | Resources | Work | Actual work |
| --- | --- | --- | --- | --- | --- | --- | --- | --- | --- | --- | --- | --- | --- | --- | --- | --- | --- |
| 2 | 1 | **Event Manager/Event Logger** | 40.25d | 2002-03-18 08:00 A | 2002-05-13 10:00 |  | 35% | 26.08d | 2002-03-18 08:00 | 2002-05-02 17:00 | 34d? | 0d |  |  | Garret Polk | 900h | 249.34h |
| 3 | 1.1 | **Work Common To Both** | 18.25d | 2002-03-18 08:00 A | 2002-04-11 10:00 |  | 55% | 8.25d | 2002-03-18 08:00 | 2002-04-02 17:00 | 12d? | 0.5d | 0d |  | Garret Polk | 318h | 120h |
| 4 | 1.1.1 | Get event manager working in NAV | 5d | 2002-03-18 08:00 A | 2002-03-22 17:00 A |  | 100% |  |  |  |  |  |  |  |  |  |  |
| 5 | 1.1.2 | Creation of Event Manager base classes | 5d | 2002-03-25 08:00 A | 2002-03-29 17:00 A | 4 | 100% |  | 2002-03-18 08:00 | 2002-03-22 17:00 | 5d |  |  | start no earlier than 2002-03-18 08:00 | Garret Polk | 40h | 40h |
| 6 | 1.1.3 | **Create event classes** | 8.25d | 2002-04-01 08:00 | 2002-04-11 10:00 | 5 |  |  | 2002-03-25 08:00 | 2002-04-02 17:00 | 7d? | 0.5d |  |  | Garret Polk | 132h |  |
| 7 | 1.1.3.1 | Virus alerts | 1d | 2002-04-01 08:00 | 2002-04-01 17:00 |  |  |  | 2002-03-25 08:00 | 2002-03-25 17:00 | 1d | 0.5d | 0d |  | Garret Polk | 8h |  |
| 8 | 1.1.3.2 | File access denied | 1d | 2002-04-02 08:00 | 2002-04-02 17:00 | 7 |  |  | 2002-03-26 08:00 | 2002-03-26 17:00 | 1d | 0.5d | 0d |  | Garret Polk | 8h |  |
| 9 | 1.1.3.3 | Script blocking actions | 1d | 2002-04-03 08:00 | 2002-04-03 17:00 | 8 |  |  | 2002-03-27 08:00 | 2002-03-27 17:00 | 1d | 0.5d | 0d |  | Garret Polk | 8h |  |
| 10 | 1.1.3.4 | Side effects actions | 0.25d | 2002-04-04 08:00 | 2002-04-04 10:00 | 9 |  |  | 2002-03-28 08:00 | 2002-03-28 17:00 | 1d? | 0.5d | 0d |  | Garret Polk | 2h |  |
| 11 | 1.1.3.5 | Scan for viruses tasks | 2d | 2002-04-04 10:00 | 2002-04-08 10:00 | 10 |  |  | 2002-03-29 08:00 | 2002-03-29 17:00 | 1d? | 0.5d | 0d |  | Garret Polk | 16h |  |
| 12 | 1.1.3.6 | Error logging | 0.5d | 2002-04-08 10:00 | 2002-04-08 15:00 | 11 |  |  | 2002-04-01 08:00 | 2002-04-01 17:00 | 1d? | 0.5d | 0d |  | Garret Polk | 4h |  |
| 13 | 1.1.3.7 | My computer scan completed | 0.25d | 2002-04-08 15:00 | 2002-04-08 17:00 | 12 |  |  | 2002-04-02 08:00 | 2002-04-02 17:00 | 1d? | 0.5d | 0d |  | Garret Polk | 2h |  |
| 14 | 1.1.3.8 | Subscription changed | 0.25d | 2002-04-09 08:00 | 2002-04-09 10:00 | 13 |  |  |  |  |  | 0.5d | 0d |  | Garret Polk | 2h |  |
| 15 | 1.1.3.9 | AP state change | 0.25d | 2002-04-09 10:00 | 2002-04-09 12:00 | 14 |  |  |  |  |  | 0.5d | 0d |  | Garret Polk | 2h |  |
| 16 | 1.1.3.10 | ALU state change | 0.25d | 2002-04-09 13:00 | 2002-04-09 15:00 | 15 |  |  |  |  |  | 0.5d | 0d |  | Garret Polk | 2h |  |
| 17 | 1.1.3.11 | New virus defs downloaded | 0.5d | 2002-04-09 15:00 | 2002-04-10 10:00 | 16 |  |  |  |  |  | 0.5d | 0d |  | Garret Polk | 4h |  |
| 18 | 1.1.3.12 | Options state change | 0.25d | 2002-04-10 10:00 | 2002-04-10 12:00 | 17 |  |  |  |  |  | 0.5d | 0d |  | Garret Polk | 2h |  |
| 19 | 1.1.3.13 | Email scanner state change | 0.25d | 2002-04-10 13:00 | 2002-04-10 15:00 | 18 |  |  |  |  |  | 0.5d | 0d |  | Garret Polk | 2h |  |
| 20 | 1.1.3.14 | IM scanner state change | 0.25d | 2002-04-10 15:00 | 2002-04-10 17:00 | 19 |  |  |  |  |  | 0.5d | 0d |  | Garret Polk | 2h |  |
| 21 | 1.1.3.15 | Password protection changed | 0.25d | 2002-04-11 08:00 | 2002-04-11 10:00 | 20 |  |  |  |  |  | 0.5d |  |  | Garret Polk | 2h |  |
| 22 | 1.2 | **Event Logger** | 5.5d | 2002-04-11 10:00 A | 2002-04-18 15:00 | 3 | 18% | 4.5d | 2002-04-03 08:00 | 2002-04-10 12:00 | 5.5d | 0d |  |  | Garret Polk | 88h | 16h |
| 23 | 1.2.1 | Create event log factory for events | 0.5d | 2002-04-11 10:00 | 2002-04-11 15:00 |  |  |  | 2002-04-03 08:00 | 2002-04-03 12:00 | 0.5d | 1d | 0d |  | Garret Polk | 4h |  |
| 24 | 1.2.2 | Create plugin for ccLog viewer | 5d | 2002-04-11 15:00 A | 2002-04-18 15:00 | 23 | 20% | 4d | 2002-04-03 13:00 | 2002-04-10 12:00 | 5d | 0d |  |  | Garret Polk | 40h | 8h |
| 25 | 1.3 | **Event Manager (not mandatory)** | 7.5d | 2002-05-01 15:00 | 2002-05-13 10:00 | 80 |  |  | 2002-04-23 13:00 | 2002-05-02 17:00 | 7.5d | 0d |  |  | Garret Polk | 172h |  |
| 26 | 1.3.1 | Create event subscriber for events | 0.5d | 2002-05-01 15:00 | 2002-05-02 10:00 |  |  |  | 2002-04-23 13:00 | 2002-04-23 17:00 | 0.5d | 0d |  |  | Garret Polk | 4h |  |
| 27 | 1.3.2 | Create event provider for events | 0.5d | 2002-05-02 10:00 | 2002-05-02 15:00 | 26 |  |  | 2002-04-24 08:00 | 2002-04-24 12:00 | 0.5d | 0d |  |  | Garret Polk | 4h |  |

| ID | WBS | Task | Duration | Start | Finish | Predecessors | Complete | Remaining | Baseline start | Baseline finish | Baseline duration | Total slack | Free slack | Constraint | Resources | Work | Actual work |
| --- | --- | --- | --- | --- | --- | --- | --- | --- | --- | --- | --- | --- | --- | --- | --- | --- | --- |
| 28 | 1.3.3 | **Add support for new events** | 6.5d | 2002-05-02 15:00 | 2002-05-13 10:00 | 27 |  |  | 2002-04-24 13:00 | 2002-05-02 17:00 | 6.5d | 0d |  |  | Garret Polk | 104h |  |
| 29 | 1.3.3.1 | Status object | 1.5d | 2002-05-02 15:00 | 2002-05-06 10:00 |  |  |  | 2002-04-24 13:00 | 2002-04-25 17:00 | 1.5d | 0d |  |  | Garret Polk | 12h |  |
| 30 | 1.3.3.2 | DefAlert | 0.5d | 2002-05-06 10:00 | 2002-05-06 15:00 | 29 |  |  | 2002-04-26 08:00 | 2002-04-26 12:00 | 0.5d | 0d |  |  | Garret Polk | 4h |  |
| 31 | 1.3.3.3 | Script Blocking UI | 0.5d | 2002-05-06 15:00 | 2002-05-07 10:00 | 30 |  |  | 2002-04-26 13:00 | 2002-04-26 17:00 | 0.5d | 0d |  |  | Garret Polk | 4h |  |
| 32 | 1.3.3.4 | LiveUpdate callback | 0.5d | 2002-05-07 10:00 | 2002-05-07 15:00 | 31 |  |  | 2002-04-29 08:00 | 2002-04-29 12:00 | 0.5d | 0d |  |  | Garret Polk | 4h |  |
| 33 | 1.3.3.5 | Scan and Deliver | 2d | 2002-05-07 15:00 | 2002-05-09 15:00 | 32 |  |  | 2002-04-29 13:00 | 2002-05-01 12:00 | 2d | 0d |  |  | Garret Polk | 16h |  |
| 34 | 1.3.3.6 | Options UI | 1d | 2002-05-09 15:00 | 2002-05-10 15:00 | 33 |  |  | 2002-05-01 13:00 | 2002-05-02 12:00 | 1d | 0d |  |  | Garret Polk | 8h |  |
| 35 | 1.3.3.7 | ConfigWIz | 0.5d | 2002-05-10 15:00 | 2002-05-13 10:00 | 34 |  |  | 2002-05-02 13:00 | 2002-05-02 17:00 | 0.5d | 0d |  |  | Garret Polk | 4h |  |
| 38 | 2 | **Main UI Options Menu** | 22d | 2002-03-18 08:00 A | 2002-04-16 17:00 |  | 82% | 4d | 2002-03-18 08:00 | 2002-04-04 17:00 | 14d | 9.75d | 0d |  | Wes Jordan | 528h | 432h |
| 39 | 2.1 | **Instant Messenger Scanning Options** | 2.5d | 2002-03-18 08:00 A | 2002-03-20 12:00 A |  | 100% |  | 2002-03-18 08:00 | 2002-03-19 12:00 | 1.5d |  |  |  | Wes Jordan | 40h | 40h |
| 40 | 2.1.1 | New UI options panel | 2d | 2002-03-18 08:00 A | 2002-03-19 17:00 A |  | 100% |  | 2002-03-18 08:00 | 2002-03-18 17:00 | 1d |  |  | start no earlier than 2002-03-18 08:00 | Wes Jordan | 16h | 16h |
| 41 | 2.1.2 | Persist options | 0.5d | 2002-03-20 08:00 A | 2002-03-20 12:00 A | 40 | 100% |  | 2002-03-19 08:00 | 2002-03-19 12:00 | 0.5d |  |  |  | Wes Jordan | 4h | 4h |
| 42 | 2.2 | **Password Protection Options** | 1.5d | 2002-03-20 13:00 A | 2002-03-21 17:00 A | 39 | 100% |  | 2002-03-19 13:00 | 2002-03-21 12:00 | 2d |  |  |  | Wes Jordan | 24h | 24h |
| 43 | 2.2.1 | New UI options in Miscellaneous panel | 0.5d | 2002-03-20 13:00 A | 2002-03-20 17:00 A |  | 100% |  | 2002-03-19 13:00 | 2002-03-19 17:00 | 0.5d |  |  |  | Wes Jordan | 4h | 4h |
| 44 | 2.2.2 | Persist options | 0.5d | 2002-03-21 08:00 A | 2002-03-21 12:00 A | 43 | 100% |  |  |  |  |  |  |  | Wes Jordan | 4h | 4h |
| 45 | 2.2.3 | Hook options menu to password engine | 0.5d | 2002-03-21 13:00 A | 2002-03-21 17:00 A | 44 | 100% |  | 2002-03-20 08:00 | 2002-03-20 17:00 | 1d |  |  |  | Wes Jordan | 4h | 4h |
| 46 | 2.3 | **LiveUpdate Options** | 3.5d | 2002-03-22 08:00 A | 2002-03-27 12:00 A | 42 | 100% |  | 2002-03-21 13:00 | 2002-03-22 12:00 | 1d |  |  |  | Wes Jordan | 56h | 56h |
| 47 | 2.3.1 | Modify UI to support product specific content | 0.5d | 2002-03-22 08:00 A | 2002-03-22 12:00 A |  | 100% |  | 2002-03-21 13:00 | 2002-03-21 17:00 | 0.5d |  |  |  | Wes Jordan | 4h | 4h |
| 48 | 2.3.2 | Add UI for 'Critical Patch Notification' | 0.5d | 2002-03-22 13:00 A | 2002-03-22 17:00 A | 47 | 100% |  | 2002-03-22 08:00 | 2002-03-22 12:00 | 0.5d |  |  |  | Wes Jordan | 4h | 4h |
| 49 | 2.3.3 | PTO | 1d | 2002-03-25 08:00 A | 2002-03-25 17:00 A | 48 | 100% |  |  |  |  |  |  |  | Wes Jordan | 8h | 8h |
| 50 | 2.3.4 | Persist options | 0.5d | 2002-03-26 08:00 A | 2002-03-26 12:00 A | 49 | 100% |  |  |  |  |  |  |  | Wes Jordan | 4h | 4h |
| 51 | 2.3.5 | Hook to LiveUpdate interface | 1d | 2002-03-26 13:00 A | 2002-03-27 12:00 A | 50 | 100% |  |  |  |  |  |  |  | Wes Jordan | 8h | 8h |
| 52 | 2.4 | **Activity Log Options** | 2d | 2002-03-27 13:00 A | 2002-03-29 12:00 | 46 | 75% | 0.5d | 2002-04-03 13:00 | 2002-04-04 17:00 | 1.5d | 18.75d | 0d |  | Wes Jordan | 32h | 24h |
| 53 | 2.4.1 | Modify UI to support new event logger | 1.5d | 2002-03-27 13:00 A | 2002-03-28 17:00 A |  | 100% |  | 2002-04-03 13:00 | 2002-04-04 17:00 | 1.5d |  |  |  | Wes Jordan | 12h | 12h |
| 54 | 2.4.2 | Persist options | 0.5d | 2002-03-29 08:00 | 2002-03-29 12:00 | 53 |  |  |  |  |  | 18.75d |  |  | Wes Jordan | 4h |  |

| ID | WBS | Task | Duration | Start | Finish | Predecessors | Complete | Remaining | Baseline start | Baseline finish | Baseline duration | Total slack | Free slack | Resources | Work | Actual work |
| --- | --- | --- | --- | --- | --- | --- | --- | --- | --- | --- | --- | --- | --- | --- | --- | --- |
| 55 | 2.5 | **Email Options** | 4d | 2002-03-29 13:00 A | 2002-04-04 12:00 | 52 | 75% | 1d | 2002-04-02 13:00 | 2002-04-03 12:00 | 1d | 15.75d | 0d | Wes Jordan | 64h | 48h |
| 56 | 2.5.1 | Create Advanced panel | 2d | 2002-03-29 13:00 A | 2002-04-02 12:00 A |  | 100% |  |  |  |  |  |  | Wes Jordan | 16h | 16h |
| 57 | 2.5.2 | Modify existing Email panel | 1d | 2002-04-02 13:00 A | 2002-04-03 12:00 A | 56 | 100% |  |  |  |  |  |  | Wes Jordan | 8h | 8h |
| 58 | 2.5.3 | Hook to new Email scanner owned options file | 1d | 2002-04-03 13:00 | 2002-04-04 12:00 | 57 |  |  | 2002-04-02 13:00 | 2002-04-03 12:00 | 1d | 15.75d |  | Wes Jordan | 8h |  |
| 59 | 2.6 | **Exclusion List Options** | 7d | 2002-04-04 13:00 A | 2002-04-15 12:00 | 55 | 71% | 2d | 2002-03-22 13:00 | 2002-04-02 12:00 | 7d | 10.75d | 0d | Wes Jordan | 112h | 80h |
| 60 | 2.6.1 | Become familiar with the code | 2d | 2002-04-04 13:00 A | 2002-04-08 12:00 A |  | 100% |  | 2002-03-22 13:00 | 2002-03-26 12:00 | 2d |  |  | Wes Jordan | 16h | 16h |
| 61 | 2.6.2 | Support adding extensions | 1d | 2002-04-08 13:00 | 2002-04-09 12:00 | 60 |  |  | 2002-03-26 13:00 | 2002-03-27 12:00 | 1d | 14.75d |  | Wes Jordan | 8h |  |
| 62 | 2.6.3 | Remove wildcard support | 1d | 2002-04-09 13:00 A | 2002-04-10 12:00 A | 61 | 100% |  | 2002-03-27 13:00 | 2002-03-28 12:00 | 1d |  |  | Wes Jordan | 8h | 8h |
| 63 | 2.6.4 | Move Exclusions panel to Manual Scan | 1d | 2002-04-10 13:00 A | 2002-04-11 12:00 A | 62 | 100% |  | 2002-03-28 13:00 | 2002-03-29 12:00 | 1d |  |  | Wes Jordan | 8h | 8h |
| 64 | 2.6.5 | Copy Exclusions panel to AP panel | 1d | 2002-04-11 13:00 A | 2002-04-12 12:00 A | 63 | 100% |  | 2002-03-29 13:00 | 2002-04-01 12:00 | 1d |  |  | Wes Jordan | 8h | 8h |
| 65 | 2.6.6 | Hook AP exclusions panel to AP options file | 1d | 2002-04-12 13:00 | 2002-04-15 12:00 | 64 |  |  | 2002-04-01 13:00 | 2002-04-02 12:00 | 1d | 10.75d |  | Wes Jordan | 8h |  |
| 66 | 2.7 | **NAV Professional Tasks** | 0.5d | 2002-04-15 13:00 | 2002-04-15 17:00 | 59 |  |  |  |  |  | 10.75d |  | Wes Jordan | 8h |  |
| 67 | 2.7.1 | Additional item to Advanced Protection panel | 0.5d | 2002-04-15 13:00 | 2002-04-15 17:00 |  |  |  |  |  |  | 10.75d |  | Wes Jordan | 4h |  |
| 68 | 2.8 | **General UI Changes** | 1d | 2002-04-16 08:00 A | 2002-04-16 17:00 A | 66 | 100% |  |  |  |  |  |  | Wes Jordan | 16h | 16h |
| 69 | 2.8.1 | Add logic to collapse non-selected arrows | 1d | 2002-04-16 08:00 A | 2002-04-16 17:00 A |  | 100% |  |  |  |  |  |  | Wes Jordan | 8h | 8h |
| 71 | 3 | **Tamper Resistance** | 3d | 2002-04-17 08:00 | 2002-04-19 17:00 | 38 |  |  | 2002-04-05 08:00 | 2002-04-09 17:00 | 3d | 9.75d | 0d | Wes Jordan | 48h |  |
| 72 | 3.1 | Modify existing signature checking API to use new ccTrust | 1d | 2002-04-17 08:00 | 2002-04-17 17:00 |  |  |  | 2002-04-05 08:00 | 2002-04-05 17:00 | 1d | 9.75d | 0d | Wes Jordan | 8h |  |
| 73 | 3.2 | Check signature of COM DLLs before instantiation | 1d | 2002-04-18 08:00 | 2002-04-18 17:00 | 72 |  |  | 2002-04-08 08:00 | 2002-04-08 17:00 | 1d | 9.75d | 0d | Wes Jordan | 8h |  |
| 74 | 3.3 | Check signature of application attempting to load DLL | 1d | 2002-04-19 08:00 | 2002-04-19 17:00 | 73 |  |  | 2002-04-09 08:00 | 2002-04-09 17:00 | 1d | 9.75d |  | Wes Jordan | 8h |  |
| 76 | 4 | **Common Error Handler** | 9d | 2002-04-18 15:00 A | 2002-05-01 15:00 |  | 16% | 7.59d | 2002-04-10 08:00 | 2002-04-23 12:00 | 9.5d | 4.5d |  | Wes Jordan; Garret Polk | 328h | 51.34h |
| 77 | 4.1 | **Win32 Implementation** | 2.5d | 2002-04-22 08:00 | 2002-04-24 12:00 | 71 |  |  | 2002-04-10 08:00 | 2002-04-11 17:00 | 2d | 9.75d | 0d | Wes Jordan | 40h |  |
| 78 | 4.1.1 | Hook selected error messages to ccErrorHandler engine | 1.5d | 2002-04-22 08:00 | 2002-04-23 12:00 |  |  |  | 2002-04-10 08:00 | 2002-04-11 12:00 | 1.5d | 9.75d | 0d | Wes Jordan | 12h |  |
| 79 | 4.1.2 | Create unique ID's for each error message | 1d | 2002-04-23 13:00 | 2002-04-24 12:00 | 78 |  |  | 2002-04-11 13:00 | 2002-04-11 17:00 | 0.5d | 9.75d |  | Wes Jordan | 8h |  |
| 80 | 4.2 | **HTML Script Implementation** | 9d | 2002-04-18 15:00 A | 2002-05-01 15:00 | 22 | 20% | 7.2d | 2002-04-10 13:00 | 2002-04-23 12:00 | 9d | 0d |  | Garret Polk | 144h | 28.8h |
| 81 | 4.2.1 | Enhance scriptable objects to return extended error info | 6d | 2002-04-18 15:00 A | 2002-04-26 15:00 |  | 30% | 4.2d | 2002-04-10 13:00 | 2002-04-18 12:00 | 6d | 0d |  | Garret Polk | 48h | 14.4h |
| 82 | 4.2.2 | Add exception handling to script | 2d | 2002-04-26 15:00 | 2002-04-30 15:00 | 81 |  |  | 2002-04-18 13:00 | 2002-04-22 12:00 | 2d | 0d |  | Garret Polk | 16h |  |
| 83 | 4.2.3 | Hook selected error messages to ccErrorHandler engine | 1d | 2002-04-30 15:00 | 2002-05-01 15:00 | 82 |  |  | 2002-04-22 13:00 | 2002-04-23 12:00 | 1d | 0d |  | Garret Polk | 8h |  |

| ID | WBS | Task | Duration | Start | Finish | Predecessors | Complete | Remaining | Baseline start | Baseline finish | Baseline duration | Total slack | Free slack | Constraint | Resources | Work | Actual work |
| --- | --- | --- | --- | --- | --- | --- | --- | --- | --- | --- | --- | --- | --- | --- | --- | --- | --- |
| 85 | 5 | **.EXE Side Effect Repair Integration** | 3d | 2002-04-24 13:00 | 2002-04-29 12:00 | 77 |  |  | 2002-04-12 08:00 | 2002-04-15 17:00 | 2d | 9.75d |  |  | Wes Jordan | 40h |  |
| 86 | 5.1 | Create functions to detect and repair side effect | 1d | 2002-04-24 13:00 | 2002-04-25 12:00 |  |  |  |  |  |  | 9.75d | 0d |  |  |  |  |
| 87 | 5.2 | Add logic to end of manual scan | 1d | 2002-04-25 13:00 | 2002-04-26 12:00 | 86 |  |  | 2002-04-12 08:00 | 2002-04-15 17:00 | 2d | 9.75d | 0d |  | Wes Jordan | 8h |  |
| 88 | 5.3 | Add logic to scan manager | 1d | 2002-04-26 13:00 | 2002-04-29 12:00 | 87 |  |  |  |  |  | 9.75d |  |  | Wes Jordan | 8h |  |
| 91 | 6 | **Installation Over Infected System** | 2d | 2002-03-18 08:00 A | 2002-03-19 17:00 A |  | 100% |  |  |  |  |  |  |  | Kevin Mong | 32h | 32h |
| 92 | 6.1 | Enahance SETUP.EXE to reinstall MSI when error detected | 1d | 2002-03-18 08:00 A | 2002-03-18 17:00 A |  | 100% |  |  |  |  |  |  | start no earlier than 2002-03-18 08:00 | Kevin Mong | 8h | 8h |
| 93 | 6.2 | Detect secondary error and provide link to webapge with known install viruses | 0.5d | 2002-03-19 08:00 A | 2002-03-19 12:00 A | 92 | 100% |  |  |  |  |  |  |  | Kevin Mong | 4h | 4h |
| 94 | 6.3 | Detect generice install error and provide link to webpage explaining install viruses | 0.5d | 2002-03-19 13:00 A | 2002-03-19 17:00 A | 93 | 100% |  |  |  |  |  |  |  | Kevin Mong | 4h | 4h |
| 96 | 7 | **Section 508** | 3d | 2002-03-20 08:00 A | 2002-03-22 17:00 A | 91 | 100% |  | 2002-03-19 08:00 | 2002-03-21 17:00 | 3d |  |  |  | Kevin Mong | 48h | 48h |
| 97 | 7.1 | Add tab support to known problematic web pages | 3d | 2002-03-20 08:00 A | 2002-03-22 17:00 A |  | 100% |  | 2002-03-19 08:00 | 2002-03-21 17:00 | 3d |  |  |  | Kevin Mong | 24h | 24h |
| 99 | 8 | **Critical Patch Notification** | 19d | 2002-03-25 08:00 A | 2002-04-18 17:00 | 96 | 16% | 16d | 2002-03-22 08:00 | 2002-04-09 17:00 | 13d | 9.25d | 0d |  | Kevin Mong | 304h | 48h |
| 100 | 8.1 | Become familiar with the Auto LiveUpdate code | 3d | 2002-03-25 08:00 A | 2002-03-27 17:00 A |  | 100% |  |  |  |  |  |  |  | Kevin Mong | 24h | 24h |
| 101 | 8.2 | Implement the alert system | 3d | 2002-03-28 08:00 | 2002-04-01 17:00 | 100 |  |  | 2002-03-22 08:00 | 2002-03-26 17:00 | 3d | 9.25d | 0d |  | Kevin Mong | 24h |  |
| 102 | 8.3 | Processing of the .TRI file | 3d | 2002-04-02 08:00 | 2002-04-04 17:00 | 101 |  |  | 2002-03-27 08:00 | 2002-03-29 17:00 | 3d | 9.25d | 0d |  | Kevin Mong | 24h |  |
| 103 | 8.4 | Add the delay mechanism | 4d | 2002-04-05 08:00 | 2002-04-10 17:00 | 102 |  |  | 2002-04-01 08:00 | 2002-04-03 17:00 | 3d | 9.25d | 0d |  | Kevin Mong | 32h |  |
| 104 | 8.5 | Maintain the patch list | 4d | 2002-04-11 08:00 | 2002-04-16 17:00 | 103 |  |  | 2002-04-04 08:00 | 2002-04-05 17:00 | 2d | 9.25d | 0d |  | Kevin Mong | 32h |  |
| 105 | 8.6 | Add 'Remind me again' to the alerts | 2d | 2002-04-17 08:00 | 2002-04-18 17:00 | 104 |  |  | 2002-04-08 08:00 | 2002-04-09 17:00 | 2d | 9.25d |  |  | Kevin Mong | 16h |  |
| 107 | 9 | **Managed Services SKU** | 5d | 2002-04-19 08:00 | 2002-04-25 17:00 | 99 |  |  |  |  |  | 9.25d | 0d |  | Kevin Mong | 80h |  |
| 108 | 9.1 | Add dynamic ability to hide features in install | 3d | 2002-04-19 08:00 | 2002-04-23 17:00 |  |  |  |  |  |  | 9.25d | 0d |  | Kevin Mong | 24h |  |
| 109 | 9.2 | Oversee merging of code from Herb's team | 2d | 2002-04-24 08:00 | 2002-04-25 17:00 | 108 |  |  |  |  |  | 9.25d |  |  | Kevin Mong | 16h |  |
| 111 | 10 | **iSetup (Download Reduction Technology)** | 2d | 2002-04-26 08:00 | 2002-04-29 17:00 | 107 |  |  | 2002-04-10 08:00 | 2002-04-11 17:00 | 2d | 9.25d |  |  | Kevin Mong | 32h |  |
| 112 | 10.1 | Create IDETECT.DLL | 1d | 2002-04-26 08:00 | 2002-04-26 17:00 |  |  |  | 2002-04-10 08:00 | 2002-04-10 17:00 | 1d | 9.25d | 0d |  | Kevin Mong | 8h |  |
| 113 | 10.2 | Create .INI file | 1d | 2002-04-29 08:00 | 2002-04-29 17:00 | 112 |  |  | 2002-04-11 08:00 | 2002-04-11 17:00 | 1d | 9.25d |  |  | Kevin Mong | 8h |  |
| 115 | 11 | **Build System Changes** | 2d | 2002-03-14 08:00 A | 2002-03-15 17:00 A |  | 100% |  | 2002-03-14 08:00 | 2002-03-15 17:00 | 2d |  |  |  | Collin Davis | 32h | 32h |
| 116 | 11.1 | Reorganize build layout | 1d | 2002-03-14 08:00 A | 2002-03-14 17:00 A |  | 100% |  | 2002-03-14 08:00 | 2002-03-14 17:00 | 1d |  |  | start no earlier than 2002-03-14 08:00 | Collin Davis | 8h | 8h |
| 117 | 11.2 | Pick up binaries/headers from CC SDK | 1d | 2002-03-15 08:00 A | 2002-03-15 17:00 A | 116 | 100% |  | 2002-03-15 08:00 | 2002-03-15 17:00 | 1d |  |  |  | Collin Davis | 8h | 8h |
| 119 | 12 | PTO | 5d | 2002-03-18 08:00 A | 2002-03-22 17:00 A | 115 | 100% |  |  |  |  |  |  |  | Collin Davis | 40h | 40h |

| ID | WBS | Task | Duration | Start | Finish | Predecessors | Complete | Remaining | Baseline start | Baseline finish | Baseline duration | Total slack | Free slack | Constraint | Resources | Work | Actual work |
| --- | --- | --- | --- | --- | --- | --- | --- | --- | --- | --- | --- | --- | --- | --- | --- | --- | --- |
| 121 | 13 | **OEM Requirements** | 4.75d | 2002-03-25 08:00 A | 2002-03-29 15:00 | 119 | 89% | 0.5d | 2002-04-23 08:00 | 2002-04-29 15:00 | 4.75d | 12.5d | 0.25d |  | Collin Davis | 76h | 68h |
| 122 | 13.1 | Audit mode detection | 1d | 2002-03-25 08:00 A | 2002-03-25 17:00 A |  | 100% |  | 2002-04-23 08:00 | 2002-04-23 17:00 | 1d |  |  |  | Collin Davis | 8h | 8h |
| 123 | 13.2 | Command line switch parsing | 1d | 2002-03-26 08:00 A | 2002-03-26 17:00 A | 122 | 100% |  | 2002-04-24 08:00 | 2002-04-25 17:00 | 2d |  |  |  | Collin Davis | 8h | 8h |
| 124 | 13.3 | Add support for new switches to install | 1d | 2002-03-27 08:00 A | 2002-03-27 17:00 A | 123 | 100% |  |  |  |  |  |  |  | Collin Davis | 8h | 8h |
| 125 | 13.4 | Maintain and add new options to OEMTool | 1d | 2002-03-28 08:00 A | 2002-03-28 17:00 A | 124 | 100% |  | 2002-04-26 08:00 | 2002-04-26 17:00 | 1d |  |  |  | Collin Davis | 8h | 8h |
| 126 | 13.5 | Delay DefAlert | 0.5d | 2002-03-29 08:00 | 2002-03-29 12:00 | 125 |  |  | 2002-04-29 08:00 | 2002-04-29 12:00 | 0.5d | 12.75d |  |  | Collin Davis | 4h |  |
| 127 | 13.6 | Remove LiveUpdate/LiveReg when last installed Symantec app | 0.25d | 2002-03-29 13:00 A | 2002-03-29 15:00 A | 126 | 100% |  | 2002-04-29 13:00 | 2002-04-29 15:00 | 0.25d |  |  |  | Collin Davis | 2h | 2h |
| 129 | 14 | **Install Changes** | 21d | 2002-04-01 08:00 A | 2002-04-29 17:00 | 121 | 14% | 18d | 2002-03-25 08:00 | 2002-04-22 17:00 | 21d | 9.25d |  |  | Collin Davis | 416h | 48h |
| 130 | 14.1 | Refactor installation of components | 1d | 2002-04-01 08:00 A | 2002-04-01 17:00 A |  | 100% |  | 2002-03-25 08:00 | 2002-03-25 17:00 | 1d |  |  | start no earlier than 2002-04-01 08:00 | Collin Davis | 8h | 8h |
| 131 | 14.2 | **Create merge modules for new features** | 5d | 2002-04-02 08:00 | 2002-04-08 17:00 | 130 |  |  | 2002-03-26 08:00 | 2002-04-01 17:00 | 5d | 11.25d | 0d |  | Collin Davis | 80h |  |
| 132 | 14.2.1 | Break it down further 1 | 2.5d | 2002-04-02 08:00 | 2002-04-04 12:00 |  |  |  | 2002-03-26 08:00 | 2002-03-28 12:00 | 2.5d | 11.25d | 0d |  | Collin Davis | 20h |  |
| 133 | 14.2.2 | Break it down further 2 | 2.5d | 2002-04-04 13:00 | 2002-04-08 17:00 | 132 |  |  | 2002-03-28 13:00 | 2002-04-01 17:00 | 2.5d | 11.25d |  |  | Collin Davis | 20h |  |
| 134 | 14.3 | Removal of CC owned components | 5d | 2002-04-09 08:00 A | 2002-04-15 17:00 | 131 | 40% | 3d | 2002-04-02 08:00 | 2002-04-08 17:00 | 5d | 9.25d | 0d |  | Collin Davis | 40h | 16h |
| 135 | 14.4 | Integration of CC deliverables | 4d | 2002-04-16 08:00 | 2002-04-19 17:00 | 134 |  |  | 2002-04-09 08:00 | 2002-04-12 17:00 | 4d | 9.25d | 0d |  | Collin Davis | 32h |  |
| 136 | 14.5 | Update UI | 1d | 2002-04-22 08:00 | 2002-04-22 17:00 | 135 |  |  | 2002-04-15 08:00 | 2002-04-15 17:00 | 1d | 9.25d | 0d |  | Collin Davis | 8h |  |
| 137 | 14.6 | **Options Settings Migration** | 2.5d | 2002-04-23 08:00 | 2002-04-25 12:00 | 136 |  |  | 2002-04-16 08:00 | 2002-04-18 12:00 | 2.5d | 9.25d | 0d |  | Collin Davis | 40h |  |
| 138 | 14.6.1 | UI sequence panel | 0.5d | 2002-04-23 08:00 | 2002-04-23 12:00 |  |  |  | 2002-04-16 08:00 | 2002-04-16 12:00 | 0.5d | 9.25d | 0d |  | Collin Davis | 4h |  |
| 139 | 14.6.2 | Custom action to migrate | 2d | 2002-04-23 13:00 | 2002-04-25 12:00 | 138 |  |  | 2002-04-16 13:00 | 2002-04-18 12:00 | 2d | 9.25d |  |  | Collin Davis | 16h |  |
| 140 | 14.7 | **Overinstall without Reboot** | 2.5d | 2002-04-25 13:00 | 2002-04-29 17:00 | 137 |  |  | 2002-04-18 13:00 | 2002-04-22 17:00 | 2.5d | 9.25d |  |  | Collin Davis | 40h |  |
| 141 | 14.7.1 | MSI sequence change | 0.5d | 2002-04-25 13:00 | 2002-04-25 17:00 |  |  |  | 2002-04-18 13:00 | 2002-04-18 17:00 | 0.5d | 9.25d | 0d |  | Collin Davis | 4h |  |
| 142 | 14.7.2 | Custom action to bump ref counts | 2d | 2002-04-26 08:00 | 2002-04-29 17:00 | 141 |  |  | 2002-04-19 08:00 | 2002-04-22 17:00 | 2d | 9.25d |  |  | Collin Davis | 16h |  |
